Schedule from OmniPlan.
Project start 2016-04-23

## Resources

| Resource | Group |
| --- | --- |
| Resource 1 | staff |
| Equipment 1 | equipment |
| Material 1 | material |
| Group 1 | group |
| Evan | staff |
| Brad | staff |
| Sarah | staff |
| Bill | staff |

## Schedule

| ID | WBS | Task | Predecessors | Complete | Constraint | Resources | Work | Actual work |
| --- | --- | --- | --- | --- | --- | --- | --- | --- |
| 1 | 1 | **Offload unwanted or time-consuming services/responsibilities.** |  |  | start no earlier than 2016-04-25 |  |  |  |
| 2 | 1.1 | Decommission old/unused hardware. |  | 91% | start no earlier than 2016-05-10 |  | 8h | 7.25h |
| 3 | 1.2 | Automate patching procedure |  | 100% | start no earlier than 2016-05-04 |  | 8h | 8h |
| 4 | 1.3 | Migrate CGA hardware out of data center |  |  | start no earlier than 2016-05-04 |  | 8h |  |
| 5 | 1.4 | Migrate/remove Redmine |  | 100% |  |  | 2h | 2h |
| 6 | 1.5 | **Migrate RT to secondary provider or utilize RT engineers to upgrade our installation. Investigate providers.** |  |  |  |  |  |  |
| 7 | 1.5.1 | Research which provider or hosted solution is best. |  | 100% | start no earlier than 2016-07-29 | Evan | 40h | 40h |
| 8 | 1.5.2 | Work with provider to upgrade and maintain RT installation. | 7 | 90% | start no earlier than 2016-08-05 | Evan | 80h | 72.25h |
| 9 | 1.5.3 | Make an inventory of all of our ‘RT’ scrips and discard those which are no longer necessary for migration. |  | 100% | start no earlier than 2016-07-29 | Evan | 40h | 40h |
| 10 | 1.6 | **Migrate tape backup archive to BackBlaze.** |  |  | start no earlier than 2016-04-25 |  |  |  |
| 11 | 1.6.1 | Get BackBlaze certified with OGC/HUIT |  | 50% | start no earlier than 2016-07-29 | Evan | 8h | 4h |
| 12 | 1.6.2 | Buy and install host which performs backups |  | 81% | start no earlier than 2016-08-01 | Sarah | 8h | 6.5h |
| 13 | 1.6.3 | Work with BackBlaze to find the most efficient way of pushing this data |  | 100% | start no earlier than 2016-04-28 |  | 8h | 8h |
| 14 | 1.6.4 | Use HashBackup |  |  | start no earlier than 2016-08-01 | Evan | 40.25h |  |
| 15 | 1.6.5 | Measure performance and reliability of process; backup data to tapes and BackBlaze | 14 |  | start no earlier than 2016-05-02 | Evan | 40h |  |
| 16 | 1.6.6 | Find out what we need to backup, and when |  |  | start no earlier than 2016-08-01 | Sarah | 8h |  |
| 17 | 1.6.7 | Re-write documentation on backing up user, project data, and restoration to conform to BackBlaze backup system. |  |  | start no earlier than 2016-08-01 | Evan | 16h |  |
| 18 | 1.7 | **Migrate all web services, except ShinyServer, to Heroku, including DVN.** |  |  |  |  |  |  |
| 19 | 1.7.1 | Migrate and decommission Jenkins, reuse. |  |  | start no earlier than 2016-07-29 | Evan | 40h |  |
| 20 | 1.7.2 | Work with Salesforce/Heroku to build an HMDC Heroku Enterprise contract |  |  | start no earlier than 2016-07-29 | Evan | 40h |  |
| 21 | 1.7.3 | Create a basic-enterprise HMDC Heroku account with some limits. |  |  | start no earlier than 2016-08-01 | Evan | 8h |  |
| 22 | 1.7.4 | Give Raman access to a basic Heroku account and ask him to deploy Dataverse Network to its and its components. |  | 69% | start no earlier than 2016-07-29 | Evan | 16h | 11h |
| 23 | 1.7.5 | Certify Heroku with OGC |  | 69% | start no earlier than 2016-05-04 |  | 8h | 5.5h |
| 24 | 1.7.6 | **Create a Heroku account and deploy Latanya’s PHP application to it.** |  |  |  |  |  |  |
| 25 | 1.7.6.1 | If successful, work with Latanya to migrate one of her websites entirely to Heroku to test the viability of this environment. |  | 100% | start no earlier than 2016-07-29 | Evan | 40h | 40h |
| 26 | 1.7.7 | Work with Heroku to determine enterprise pricing for the amount of web sites we host. |  | 41% | start no earlier than 2016-07-29 | Evan | 24h | 9.75h |
| 27 | 1.7.8 | Determine the best method to migrate our users permissions to Heroku: How much CPU time should they get? How much memory should they get? Should they be allowed to provision as many websites as they want, etc. |  |  | start no earlier than 2016-07-29 | Brad | 40h |  |
| 28 | 1.7.9 | Determine the best method for file storage on Heroku — using an S3 bucket, connecting to our local NetApp, etc. |  | 100% | start no earlier than 2016-07-29 | Evan | 40h | 40h |
| 29 | 1.7.10 | Work with Gary and Cris to decide how much support we provide for users in the Heroku environment: Do we help them setup GitHub repositories? Do we help them with basic PHP programming fundamentals, permissions? |  |  | start no earlier than 2016-07-29 | Brad | 24h |  |
| 30 | 1.7.11 | Migrate all sites to Heroku. Provide a deadline. |  | 12% | start no earlier than 2016-07-29 | Evan | 8h | 1h |
| 31 | 1.7.12 | Ask DVN to migrate their entire toolchain to Heroku. Provide a deadline. |  |  | start no earlier than 2016-08-01 | Evan | 8h |  |

Notes:
- 5: DVN will probably require a data backup.
- 6: RT provides both a hosted solution or you can hire a contractor to duplicate and upgrade your service. We should investigate which is preferable.
- 8: This would hopefully require little effort on our part.
- 18: Heroku is a layer on top of AWS which provides point-and-click deployment of PHP, Python, Ruby, and Node.JS applications. Requires basic familiarity with Github.
- 22: This should actually give them what they want — latest Python, automatically provisioning NGINX, etc.
- 24: Ask Latanya which PHP application we can migrate for testing — one that contains no important/sensitive data. Take this PHP application from /nfs/www and migrate it to Heroku.
- 26: Collect the amount of websites we host. The amount of PHP and/or Python websites we host does not account for very much.
- 29: We prefer a self-service model. If possible, make users perform the majority of the work, apart from initial account setup.
- 31: We may need to provision a Jenkins instance for them, although this may be provided by Heroku as well.

| ID | WBS | Task | Type | Predecessors | Complete | Constraint | Resources | Work | Actual work |
| --- | --- | --- | --- | --- | --- | --- | --- | --- | --- |
| 32 | 2 | **Migrate/upgrade essential services.** |  | 1 |  |  |  |  |  |
| 33 | 2.1 | Migrate appropriate DHCP options to Amazon DHCP |  |  |  | start no earlier than 2016-08-01 |  | 40h |  |
| 34 | 2.2 | Migrate DNS to Route 53/Azure |  |  |  | start no earlier than 2016-08-01 |  | 40h |  |
| 35 | 2.3 | **Upgrade/migrate LDAP to CentOS 6/7/Amazon** |  |  |  | start no earlier than 2016-08-01 |  |  |  |
| 36 | 2.3.1 | Build and test LDAP on CentOS 6/Amazon |  |  |  | start no earlier than 2016-05-10 |  | 8h |  |
| 37 | 2.3.2 | Get Amazon certified for Level 4 |  |  |  | start no earlier than 2016-05-10 |  | 8h |  |
| 38 | 3 | **Rectify Puppet manifests with AWS/Cloud and CentOS 7** |  | 32 |  |  |  |  |  |
| 39 | 3.1 | **Migrate hmdc-admin repository to GitHub** |  |  |  |  |  |  |  |
| 40 | 3.1.1 | Mine hmdc-admin for passwords and remove or place passwords elsewhere. |  |  | 11% | start no earlier than 2016-09-16 | Evan | 40h | 4.25h |
| 41 | 3.1.2 | Push de-password-ified hmdc-admin repository to GitHub. |  |  |  | start no earlier than 2016-09-16 | Evan | 8h |  |
| 42 | 3.1.3 | Retire HUIT GIT account, but keep a backup of hmdc-admin on NFS in case need to look at commit history. |  |  |  | start no earlier than 2016-09-16 | Evan | 1.5h |  |
| 43 | 3.2 | Test all pertinent modules on AWS, CentOS 7, make changes accordingly. |  |  | 10% | start no earlier than 2016-09-16 | Evan | 96h | 9.25h |
| 44 | 3.3 | Hiera-ify all data structures currently used in hmdc-admin, adding an $::operatingsystem entry to the Hiera tree. |  |  |  | start no earlier than 2016-09-16 | Brad | 40h |  |
| 45 | 3.4 | Write spec tests for all modules which lack spec tests. |  |  |  | start no earlier than 2016-09-16 | Brad | 80h |  |
| 46 | 4 | Create cloud agnostic template for RCE deployment |  |  |  | start no earlier than 2016-07-29 | Bill | 80h |  |
| 47 | 5 | AWS/AZURE/Cloud migration preparations complete | milestone | 38 |  | start no earlier than 2016-04-25 |  |  |  |
| 48 | 6 | **Prepare RCE/AWS/AZURE demo. environment** |  | 47SS |  | start no earlier than 2016-04-24 |  |  |  |
| 49 | 6.1 | Experiment with using Offline ClassAds to scale |  |  |  | start no earlier than 2016-10-04 | Evan | 40h |  |
| 50 | 6.2 | Reconfigure AWS/AZURE networking to expose a public interface for NX4 portal |  |  |  | start no earlier than 2016-08-01 | Bill | 32h |  |
| 51 | 6.3 | Install NX4/5 Portal (?) |  |  |  | start no earlier than 2016-10-04 | Evan | 80h |  |
| 52 | 6.4 | Install NX4/5 login nodes |  |  |  | start no earlier than 2016-10-04 | Evan | 80h |  |
| 53 | 6.5 | Deploy HTCondor collector/negotiator |  |  |  | start no earlier than 2016-10-04 | Evan | 40h |  |
| 54 | 6.6 | Deploy 2..3 high memory EC2 instances for HTCondor startd(s), permanent. |  |  |  | start no earlier than 2016-10-04 | Evan | 40h |  |
| 55 | 7 | **Production-ize RCE AWS/AZURE environment** |  | 48SS |  | start no earlier than 2016-05-02 |  |  |  |
| 56 | 7.1 | **Performance testing** |  |  |  | start no earlier than 2016-05-02 |  |  |  |
| 57 | 7.1.1 | Performance test NoMachine and XPRA latency, compared to local. |  |  |  | start no earlier than 2016-07-29 | Evan | 40h |  |

Notes:
- 35: Maybe put slave hosts in different zones? Expose via Amazon LB. We need to make sure this works for CentOS 7 as well if we go to Azure.
- 40: There may be a faster way of doing this. We may just want to truncate our Git history. Similarly, because we are moving to the Cloud, we may not need passwords like the Server Reports password statically defined inside our repository.

| ID | WBS | Task | Predecessors | Complete | Constraint | Resources | Work | Actual work |
| --- | --- | --- | --- | --- | --- | --- | --- | --- |
| 58 | 7.2 | **Investigate using New Relic, Boundary, or Opsview.** |  |  | start no earlier than 2016-05-02 |  |  |  |
| 59 | 7.2.1 | Demo solutions in the cloud environment. |  |  | start no earlier than 2016-07-29 | Bill | 80h |  |
| 60 | 7.2.2 | Set-up appropriate alerts. |  |  | start no earlier than 2016-08-01 | Bill | 80h |  |
| 61 | 7.2.3 | Migrate pertinent monitors from OpsView to cloud solution, could be OpsView. |  |  | start no earlier than 2016-08-01 | Bill | 160h |  |
| 62 | 7.3 | Document monitoring |  |  | start no earlier than 2016-07-29 | Bill | 40h |  |
| 63 | 7.4 | Integrate monitoring with Puppet if necessary |  |  | start no earlier than 2016-08-01 | Evan | 80h |  |
| 64 | 7.5 | Determine proper default for amount of compute machines available, test autoscaling under average load. |  |  | start no earlier than 2016-08-01 | Evan | 8h |  |
| 65 | 7.6 | Reconfigure RCE Cluster Tools (rce_submit.py) to, instead of polling, send email notification when job is active. |  |  | start no earlier than 2016-08-01 | Evan | 8h |  |
| 66 | 8 | **Migrate most services to Cloud** | 55SS |  | start no earlier than 2016-05-02 |  |  |  |
| 67 | 8.1 | Slowly de-commission execute nodes, sell or move to recycling. |  |  | start no earlier than 2016-07-29 | Sarah | 40h |  |
| 68 | 8.2 | De-commission RCE Login nodes, sell or cycle, migrate licenses to Cloud. |  |  | start no earlier than 2016-07-29 | Sarah | 40h |  |
| 69 | 8.3 | With all web apps migrated to Heroku, turn off and recycle www-* hosts. |  |  | start no earlier than 2016-07-29 | Sarah | 40h |  |
| 70 | 8.4 | Migrate pertinent fs-4 tasks to another host, turn off and recycle fs-4. |  | 100% | start no earlier than 2016-07-29 | Evan | 40h | 40h |
| 71 | 8.5 | With RT migrated to cloud provider, turn off RT and recycle. |  | 100% | start no earlier than 2016-07-29 | Sarah | 8h | 8h |
